# Oil Jetty Project - baseline schedule_V2

Schedule from MS Project, 2024-06-02 to 2030-06-04, status date 2025-01-30, 9 hours a day, A marks actual dates.

## Calendars

- לוח חגים יהודיים 2030 6 כולל איסלם: Mon-Thu 07:00-12:00, 13:00-17:00; Fri-Sat off; Sun 07:00-12:00, 13:00-17:00. Exceptions (off unless hours are given): 2024-06-11 07:00-12:00 (ערב שבועות), 2024-06-12 (שבועות), 2024-06-17 to 2024-06-20 (עיד אל אדחא), 2024-10-02 07:00-12:00 (ערב ראש השנה), 2024-10-03 to 2024-10-04 (ראש השנה), 2024-10-11 08:00-13:00 (ערב כיפור), 2024-10-12 (כיפור), 2024-10-16 07:00-12:00 (ערב סוכות), 2024-10-17 (סוכות), 2024-10-23 07:00-12:00 (ערב שמחת תורה), 2024-10-24 (שמחת תורה), 2025-03-30 to 2025-04-01 (עיד אל פיטר), 2025-04-12 (ערב פסח), 2025-04-13 (פסח), 2025-04-18 08:00-13:00 (ערב שביעי של פסח), 2025-04-19 (שביעי של פסח), 2025-04-30 07:00-12:00 (יום הזיכרון), 2025-05-01 (יום העצמאות), 2025-06-01 07:00-12:00 (ערב שבועות), 2025-06-02 (שבועות), 2025-06-06 to 2025-06-09 (עיד אל אדחא), 2025-09-22 07:00-12:00 (ערב ראש השנה), 2025-09-23 to 2025-09-24 (ראש השנה), 2025-10-01 07:00-12:00 (ערב כיפור), 2025-10-02 (כיפור), 2025-10-06 07:00-12:00 (ערב סוכות), 2025-10-07 (סוכות), 2025-10-13 07:00-12:00 (ערב שמחת תורה), 2025-10-14 (שמחת תורה), 2026-03-19 to 2026-03-21 (עיד אל פיטר), 2026-04-01 07:00-12:00 (ערב פסח), 2026-04-02 (פסח), 2026-04-07 07:00-12:00 (ערב שביעי של פסח), 2026-04-08 (שביעי של פסח), 2026-04-21 07:00-12:00 (יום הזיכרון), 2026-04-22 (יום העצמאות), 2026-05-21 07:00-12:00 (ערה שבועות), 2026-05-22 (שבועות), 2026-05-26 to 2026-05-29 (עיד אל אדחא), 2026-09-11 08:00-13:00 (ערב ראש השנה), 2026-09-12 to 2026-09-13 (ראש השנה), 2026-09-20 (ערב יום כיפור), 2026-09-21 (יום כיפור), 2026-09-25 08:00-13:00 (ערב סוכות), 2026-09-26 (סוכות), 2026-10-02 08:00-13:00 (ערב שמחת תורה), 2026-10-03 (שמחת תורה), 2027-03-08 to 2027-03-10 (עיד אל פיטר), 2027-04-21 07:00-12:00 (ערב פסח), 2027-04-22 (פסח), 2027-04-27 07:00-12:00 (ערב שביעי של פסח), 2027-04-28 (שביעי של פסח), 2027-05-11 07:00-12:00 (יום הזיכרון), 2027-05-12 (יום העצמאות), 2027-05-15 to 2027-05-18 (עיד אל אדחא), 2027-06-10 07:00-12:00 (ערב שבועות), 2027-06-11 (שבועות), 2027-10-01 08:00-13:00 (ערב ראש השנה), 2027-10-02 to 2027-10-03 (ראש השנה), 2027-10-10 07:00-12:00 (ערב כיפור), 2027-10-11 (כיפור), 2027-10-15 08:00-13:00 (ערב סוכות), 2027-10-16 (סוכות), 2027-10-22 08:00-13:00 (ערב שמחת תורה), 2027-10-23 (שמחת תורה), 2028-02-25 to 2028-02-27 (עיד אל פיטר), 2028-04-10 07:00-12:00 (ערב פסח), 2028-04-11 (פסח), 2028-04-16 07:00-12:00 (ערב שביעי של פסח), 2028-04-17 (שביעי של פסח), 2028-05-01 07:00-12:00 (יום הזיכרון), 2028-05-02 (יום העצמאות), 2028-05-04 to 2028-05-07 (עיד אל אדחא), 2028-05-30 07:00-12:00 (ערב שבועות), 2028-05-31 (שבועות), 2028-09-20 07:00-12:00 (ערב ראש השנה), 2028-09-21 to 2028-09-22 (ראש השנה), 2028-09-29 08:00-13:00 (ערב כיפור), 2028-09-30 (כיפור), 2028-10-04 07:00-12:00 (ערב סוכות), 2028-10-05 (סוכות), 2028-10-11 07:00-12:00 (ערב שמחת תורה), 2028-10-12 (שמחת תורה), 2029-02-14 to 2029-02-16 (עיד אל פיטר), 2029-03-30 08:00-13:00 (ערב פסח), 2029-03-31 (פסח), 2029-04-05 07:00-12:00 (ערב שביעי של פסח), 2029-04-06 (שביעי של פסח), 2029-04-18 07:00-12:00 (יום הזיכרון), 2029-04-19 (יום העצמאות), 2029-04-23 to 2029-04-26 (עיד אל אדחא), 2029-05-19 (ערב שבועות), 2029-05-20 (שבועות), 2029-09-09 07:00-12:00 (ערב ראש השנה), 2029-09-10 to 2029-09-11 (ראש השנה), 2029-09-18 07:00-12:00 (ערב כיפור), 2029-09-19 (כיפור), 2029-09-23 07:00-12:00 (ערב סוכות), 2029-09-24 (סוכות), 2029-09-30 07:00-12:00 (ערב שמחת תורה), 2029-10-01 (שמחת תורה), 2030-02-03 to 2030-02-05 (עיד אל פיטר), 2030-04-12 to 2030-04-15 (עיד אל אדחא), 2030-04-17 07:00-12:00 (ערב פסח), 2030-04-18 (פסח), 2030-04-23 07:00-12:00 (ערב שביעי של פסח), 2030-04-24 (שביעי של פסח), 2030-05-07 07:00-12:00 (יום הזיכרון), 2030-05-08 (יום העצמאות).

## Resources

| Resource |
| --- |
| Dredging Team & Equipment |
| Pile Driving Team & Equipment |
| Dolphin Pile Driving Team & Equipment |
| Vibro Team & Equipment |
| Traveling Molds for Fascia Beams |

## Schedule

| ID | WBS | Task | Type | Duration | Start | Finish | Predecessors | Complete | Remaining | Baseline start | Baseline finish | Baseline duration | Total slack | Free slack | Constraint | Deadline | Work | סימוכין בחוזה | LBS legend |
| --- | --- | --- | --- | --- | --- | --- | --- | --- | --- | --- | --- | --- | --- | --- | --- | --- | --- | --- | --- |
| 1 | 1 | **Hamifratz Port Oil Jetty** |  | 1485d | 2024-06-02 A | 2030-06-04 |  | 29% | 1055.28d | 2024-06-02 | 2030-03-26 | 1440.53d | 0d |  |  |  | 3492h |  |  |
| 2 | 1.1 | Letter of Acceptance | milestone | 0d | 2024-06-02 A | 2024-06-02 A |  | 100% |  | 2024-06-02 | 2024-06-02 | 0d |  |  | start no earlier than 2024-06-02 |  |  |  |  |
| 3 | 1 | **Contract Milestones** |  | 673.11d | 2024-08-20 A | 2027-05-08 |  |  | 673.11d | 2024-08-20 | 2027-02-27 | 628d | -44.11d | 0d |  |  |  |  |  |
| 4 | 1.1 | Commencement Date (C.D)/ Signature of the Contract Agreement | milestone | 0d | 2024-08-20 A | 2024-08-20 A | 2FS+60ed | 100% |  | 2024-08-20 | 2024-08-20 | 0d |  |  | start no earlier than 2024-08-20 |  |  | within 28 days, s-clause 8.1 |  |
| 5 | 1.2 | Milestone 1 - Mobilization | milestone | 0d | 2025-02-23 | 2025-02-23 | 140 |  |  | 2025-01-20 | 2025-01-20 | 0d | -23.78d | 0d |  | 2025-01-20 |  |  |  |
| 6 | 1.3 | Milestone 2 - Sheet Piles (South and North Main walls) - 100m , Sheet Piles of Eastern Closure wall | milestone | 0d | 2024-08-20 | 2024-08-20 |  |  |  | 2025-06-05 | 2025-06-05 | 0d | 197.89d |  |  | 2025-06-05 |  |  | Milestone 2 |
| 7 | 1.4 | Milestone 3 - Completion of all Steel Sheet Pile works in accordance with the Design | milestone | 0d | 2024-08-20 | 2024-08-20 |  |  |  | 2025-10-05 | 2025-10-05 | 0d | 278d |  |  | 2025-10-05 |  |  | Milestone 3 |
| 8 | 1.5 | Milestone 4 - Completion of Vibroflotation W/Stone Columns and Final Tensioning of Tie Rods | milestone | 0d | 2026-08-25 | 2026-08-25 | 244 |  |  | 2026-06-18 | 2026-06-18 | 0d | -47.67d | 0d |  | 2026-06-20 |  |  | Milestone 4 |
| 9 | 1.6 | Milestone 5 - Completion of Mooring Dolphins Concrete Pile Caps, Inclinometers and Test stations works and Completion of Fascia Beam and Capping Beam concrete works | milestone | 0d | 2026-11-29 | 2026-11-29 | 272, 105 |  |  | 2026-11-05 | 2026-11-05 | 0d | -16d | 0d |  | 2026-11-05 |  |  | Milestone 5 |
| 10 | 1.7 | Milestone 6 - Completion of: Ground Improvement works, Scour Protection works, Cathodic Protection and Grounding works, Installation of all Mooring Dolphins and Jetty Accessories, Settlement monitoring stations | milestone | 0d | 2027-02-08 | 2027-02-08 | 294 |  |  | 2026-12-03 | 2026-12-03 | 0d | -47d | 0d |  | 2026-12-05 |  |  |  |
| 11 | 1.8 | Milestone 7 - Final completion of all of the Works | milestone | 0d | 2027-05-08 | 2027-05-08 | 301 |  |  | 2027-02-27 | 2027-02-27 | 0d | -44.11d | 0d |  | 2027-02-27 |  |  |  |
| 12 | 1.3 | **Contractual documents to submit** |  | 672.11d | 2024-08-20 A | 2027-05-08 |  |  | 672.11d | 2024-08-20 | 2027-02-27 | 628d | -44.11d | 0d |  |  |  |  |  |
| 13 | 1.3.1 | Performance Security (10% of the Accepted Contract Amount) | milestone | 0d | 2024-08-20 A | 2024-08-20 A | 4, 27 | 100% |  | 2024-08-20 | 2024-08-20 | 0d |  |  |  |  |  | s-clause 4.2 |  |
| 14 | 1.3.2 | Defects Liability Security | milestone | 0d | 2027-05-08 | 2027-05-08 | 300 |  |  | 2027-02-27 | 2027-02-27 | 0d | -44.11d | 0d |  |  |  | s-clause 11.12 |  |
| 15 | 1.3.3 | Marine works insurance | milestone | 0d | 2025-02-02 | 2025-02-02 | 4FS+21d |  |  | 2025-01-05 | 2025-01-05 | 0d | -2.64d | 0d | start no earlier than 2025-02-02 |  |  |  |  |
| 16 | 1.4 | **Authorizations** |  | 660d | 2024-08-20 A | 2027-04-15 |  | 86% | 90.61d | 2024-08-20 | 2027-02-04 | 612.2d | 772.44d |  |  |  |  |  |  |
| 17 | 1.4.1 | Building permit for Oil Jetty marine works - from Employer |  | 163ed | 2024-08-20 A | 2025-01-30 A | 4 | 100% |  | 2024-08-20 | 2024-10-21 | 62ed |  |  |  |  |  |  |  |
| 18 | 1.4.2 | Dumping permit unsuitable - from Employer based on documentation from the Contractor |  | 128d | 2024-08-21 A | 2025-02-20 | 4 | 88% | 14.78d | 2024-08-21 | 2024-10-28 | 45d | -7.78d | 0d | finish no earlier than 2025-02-10 |  |  |  |  |
| 19 | 1.4.3 | Dumping permit suitable - from Employer based on documentation from the Contractor |  | 174d | 2024-08-21 A | 2025-05-04 | 4 | 65% | 60.78d | 2024-08-21 | 2024-10-28 | 45d | 1258.44d |  |  |  |  |  |  |
| 20 | 8.1 | Obtaining a certificate of completion from the National Licensing Committee |  | 6d | 2027-02-23 | 2027-03-02 | 296 |  |  | 2026-12-17 | 2026-12-27 | 6d | -18d | 0d |  |  |  |  |  |
| 21 | 2.9 | Key managerial and technical personnel of the Contractor |  | 133d | 2024-08-21 A | 2025-02-27 | 4 | 85% | 19.78d | 2024-08-21 | 2024-11-07 | 53d | -20.42d | 0d |  |  |  |  |  |
| 22 | 8.6 | Close Out of all open NCR’s |  | 35d | 2027-02-23 | 2027-04-15 | 296 |  |  | 2026-12-17 | 2027-02-04 | 35d | -47d | 0d |  |  |  |  |  |
| 23 | 8.4 | Submission of and having the Engineer final approval for the final version of the AS MADE drawings, |  | 20d | 2027-03-16 | 2027-04-12 | 37 |  |  | 2027-01-04 | 2027-02-01 | 20d | -44d | 0d |  |  |  |  |  |
| 24 | 8.7 | Submission of and having the Engineer final approval for the project manual for all the materials and facilities that the Contractor has supplied and used for the construction of the permanent Works, |  | 35d | 2027-02-23 | 2027-04-15 | 296 |  |  | 2026-12-17 | 2027-02-04 | 35d | -47d | 0d |  |  |  |  |  |
| 25 | 1.4.9 | Submission of and having the Engineer final approval for A2 major sub-contractor |  | 5.35emo | 2024-08-20 A | 2025-01-28 A | 4 | 100% |  | 2024-08-20 | 2025-01-17 | 5emo |  |  |  |  |  |  |  |

Notes:
- 15: 30/01/25: expected until 02/02/25. Because of the war, nobody was ready to provide insurance. We obtained authorization until 05/01
- 17: 30/01/25: obtained / 23/12/24: expected 15/01/2025 (Adir)
- 18: 30/01/25: committee will meet on the 18/02/25 / 06/01/25: there are approximately 70,000 cubic meters to excavate that wee want to split in 2. For unsuitable material until 16/02/25 then the dumping committee that is supposed to discuss the sand. Shafir needs to provide the method/proof of dumping stone-free sand for option A and the same for building the intermediate piles/ramp that will become a fill material or dumping material....
- 19: 06/01/25: there are approximately 70,000 cubic meters to excavate that wee want to split in 2. For unsuitable material until 16/02/25 then the dumping committee that is supposed to discuss the sand. Shafir needs to provide the method/proof of dumping ston
- 21: 30/01/25: A3 (dredging) depends on contract signature and A1 (SP manager) will be Tsafi. Expected 27/02/25 / 23/12/24: personel has been submitted except SP manager - until 02/25 is OK
- 25: 30/01/25: obtained 28/01/25 / 23/12/24: New finish date estimate

| ID | WBS | Task | Type | Duration | Start | Finish | Predecessors | Complete | Remaining | Baseline start | Baseline finish | Baseline duration | Total slack | Free slack | סימוכין בחוזה |
| --- | --- | --- | --- | --- | --- | --- | --- | --- | --- | --- | --- | --- | --- | --- | --- |
| 26 | 1.5 | **Studies and documents to submit** |  | 655d | 2024-08-20 A | 2027-04-08 |  | 82% | 116.76d | 2024-08-20 | 2027-01-28 | 607.2d | -42d | 0d |  |
| 27 | 1.5.1 | Safety plan and risk survey for the Staging Area | milestone | 0d | 2024-08-20 A | 2024-08-20 A | 4 | 100% |  | 2024-08-20 | 2024-08-20 | 0d |  |  | the employer provides access |
| 28 | 1.5.2 | Programme (Schedule) submission | milestone | 0d | 2024-10-08 A | 2024-10-08 A | 4FS+49ed | 100% |  | 2024-10-08 | 2024-10-08 | 0d |  |  | s-clause 8.3 |
| 29 | 1.5.3 | Programme submission, rejects and re-submissions |  | 36d | 2024-10-09 A | 2024-12-02 A | 28 | 100% |  |  |  |  |  |  |  |
| 30 | 1.5.4 | Non-compliance notice of the Programme | milestone | 0d | 2024-12-02 A | 2024-12-02 A | 27, 29 | 100% |  | 2024-11-03 | 2024-11-03 | 0d |  |  | the engineer may give the notice |
| 31 | 2.1 | Site survey and detailed documentation |  | 105d | 2024-08-21 A | 2025-01-20 A | 4 | 100% |  | 2024-08-21 | 2024-10-21 | 41d |  |  |  |
| 32 | 2.2 | Perform preliminary surveys and submission of final reports |  | 114d | 2024-08-21 A | 2025-02-02 | 4 | 99% | 0.78d | 2024-08-21 | 2024-09-23 | 24d | -42.42d | 0d |  |
| 33 | 2.4 | Carry out , submission and approval of all Preliminary Surveys |  | 20d | 2025-03-03 | 2025-04-03 | 31, 32FS+21d |  |  | 2024-10-21 | 2024-11-19 | 20d | -42.42d | 0d |  |
| 34 | 2.12 | Method statements for all construction activities |  | 191ed | 2024-08-20 A | 2025-02-27 | 4 | 85% | 28ed | 2024-08-20 | 2024-10-19 | 60ed | -75.42d | 0d |  |
| 35 | 8.3 | Submission of final bathymetric survey (Post-dredge surveys) and dredge all areas which do not comply with the tolerance requirements specified in the Contract, |  | 30d | 2027-02-23 | 2027-04-08 | 296 |  |  | 2026-12-17 | 2027-01-28 | 30d | -42d | 0d |  |
| 36 | 8.5 | Submission of final Settlement monitoring measurements |  | 12d | 2027-02-23 | 2027-03-15 | 296 |  |  | 2026-12-17 | 2027-01-04 | 12d | -24d | 0d |  |
| 37 | 1.5.11 | As-Made drawings |  | 12d | 2027-02-23 | 2027-03-15 | 296 |  |  | 2026-12-17 | 2027-01-04 | 12d | -44d | 0d |  |
| 38 | 1.6 | **Purchase and delivery on site** |  | 544d | 2024-08-21 A | 2026-11-01 |  | 33% | 364.35d | 2024-08-21 | 2026-11-01 | 544d | 888.44d |  |  |
| 39 | 1.6.1 | **Long-Lead Items (LLIs)** |  | 526d | 2024-08-21 A | 2026-10-06 |  | 25% | 396.16d | 2024-08-21 | 2026-10-06 | 526d | 906.44d |  |  |
| 40 | 2.10 | **HZ&AZ Steel Sheet piles** |  | 255d | 2024-08-21 A | 2025-08-31 |  | 38% | 157.69d | 2024-08-21 | 2025-06-03 | 194d | 1177.44d |  |  |
| 41 | 1.6.1.1.1 | Product submission |  | 40d | 2024-08-21 A | 2024-10-20 A | 4 | 100% |  | 2024-08-21 | 2024-10-20 | 40d |  |  |  |
| 42 | 1.6.1.1.2 | Engineer Approval |  | 21d | 2024-10-20 A | 2024-11-19 A | 41 | 100% |  | 2024-10-20 | 2024-11-19 | 21d |  |  |  |
| 43 | 1.6.1.1.3 | Order passed |  | 10d | 2024-11-19 A | 2024-12-03 A | 42 | 100% |  | 2024-11-19 | 2024-12-03 | 10d |  |  |  |
| 44 | 1.6.1.1.4 | Delivery on site - 1st batch - 100m + closure wall |  | 104d | 2024-12-03 A | 2025-05-05 | 43 | 41% | 61.78d | 2024-12-03 | 2025-01-12 | 28d | -46.67d | 0d |  |
| 45 | 1.6.1.1.5 | Delivery on site - 2nd batch - 400m |  | 159d | 2024-12-03 A | 2025-07-27 | 43 | 27% | 116.78d | 2024-12-03 | 2025-03-23 | 78d | -46.67d | 0d |  |
| 46 | 1.6.1.1.6 | Delivery on site - 3rd batch |  | 184d | 2024-12-03 A | 2025-08-31 | 43 | 23% | 141.78d | 2024-12-03 | 2025-06-03 | 123d | 1177.44d |  |  |
| 47 | 2.10 | **Mooring Dolphins Steel Pipe Piles** |  | 218d | 2024-11-04 A | 2025-09-17 |  | 29% | 154.78d | 2024-11-04 | 2025-07-15 | 172d | 111.33d |  |  |
| 48 | 1.6.1.2.1 | Product submission - supplier |  | 48d | 2024-11-04 A | 2025-01-09 A | 4FS+50d | 100% |  | 2024-11-04 | 2024-12-03 | 21d |  |  |  |
| 49 | 1.6.1.2.2 | Engineer Approval - supplier |  | 10d | 2025-01-09 A | 2025-01-23 A | 48 | 100% |  | 2024-12-03 | 2025-01-01 | 21d |  |  |  |
| 50 | 1.6.1.2.3 | Product submission - product |  | 9d | 2025-01-23 A | 2025-02-05 | 49 | 58% | 3.78d | 2024-11-04 | 2024-12-03 | 21d | 111.33d | 0d |  |
| 51 | 1.6.1.2.4 | Engineer Approval - product |  | 21d | 2025-02-05 | 2025-03-06 | 50 |  |  | 2024-12-03 | 2025-01-01 | 21d | 111.33d | 0d |  |
| 52 | 1.6.1.2.5 | Order passed |  | 10d | 2025-03-06 | 2025-03-20 | 51 |  |  | 2025-01-01 | 2025-01-15 | 10d | 111.33d | 0d |  |
| 53 | 1.6.1.2.6 | Delivery on site (for all the batches) |  | 120d | 2025-03-20 | 2025-09-17 | 52 |  |  | 2025-01-15 | 2025-07-15 | 120d | 111.33d |  |  |

Notes:
- 29: 23/12/24: summary of the 5 submissions
- 31: 30/01/25: submitted on 20/01/25, authorization obtained 20/01/25 / 23/12/24: Because of the war, the survey could not been performed on time (no authorization to dive)
- 32: 30/01/25: expected 02/02/25 / 06/01/25:Start 19/12/24. Duration of a month and a half - likely - until 02/10/25 / 23/12/24: Because of the war, the survey could not been performed on time (no available GPS)
- 34: 30/01/25: we began. Expected 27/02
- 44: 23/12/24: expected 09/03/2025 in Antwerp + delivery to Haifa + verification + Engineer's approval - expected availability 20/04/2025
- 45: 23/12/24: expected 16/06/2025 in Antwerp + delivery to Haifa + verification + Engineer's approval - expected availability 26/07/2025
- 46: 23/12/24: expected 20/07/2025 in Antwerp + + delivery to Haifa + verification + Engineer's approval - expected availability 30/08/2025
- 48: 30/01/25: submission 09/01/25 of supplier. Submission of material expected 05/02/25. / 23/12/24: We cannot order from Turkiye anymore because of the war, hence the delay
- 49: 30/01/25: answer received on 16/01/25.
- 50: 30/01/25: submission 09/01/25 of supplier. Submission of material expected 05/02/25. / 23/12/24: We cannot order from Turkiye anymore because of the war, hence the delay
- 51: 30/01/25: answer received on 16/01/25.

| ID | WBS | Task | Duration | Start | Finish | Predecessors | Complete | Remaining | Baseline start | Baseline finish | Baseline duration | Total slack | Free slack |
| --- | --- | --- | --- | --- | --- | --- | --- | --- | --- | --- | --- | --- | --- |
| 54 | 2.11 | **Tie-Rods Incl.all their accessories and waling beam for Anchor wall** | 230d | 2024-08-21 A | 2025-07-27 |  | 49% | 116.78d | 2024-08-21 | 2025-04-28 | 171d | 0d |  |
| 55 | 1.6.1.3.1 | Product submission | 40d | 2024-08-21 A | 2024-10-20 A | 4 | 100% |  | 2024-08-21 | 2024-10-20 | 40d |  |  |
| 56 | 1.6.1.3.2 | Engineer Approval | 21d | 2024-10-20 A | 2024-11-19 A | 55 | 100% |  | 2024-10-20 | 2024-11-19 | 21d |  |  |
| 57 | 1.6.1.3.3 | Order passed | 10d | 2024-11-19 A | 2024-12-03 A | 56 | 100% |  | 2024-11-19 | 2024-12-03 | 10d |  |  |
| 58 | 1.6.1.3.4 | Delivery on site - one batch | 159d | 2024-12-03 A | 2025-07-27 | 57 | 27% | 116.78d | 2024-12-03 | 2025-04-28 | 100d | -47.67d | 0d |
| 59 | 1.6.1.4 | **Anodes Type A and Type B for sheet pile walls and Anodes for pipe piles** | 87d | 2025-09-21 | 2026-01-28 |  |  |  | 2025-09-21 | 2026-01-28 | 87d | 189d |  |
| 60 | 1.6.1.4.1 | Product submission | 21d | 2025-09-21 | 2025-10-28 | 4FS+270d |  |  | 2025-09-21 | 2025-10-28 | 21d | 189d | 0d |
| 61 | 1.6.1.4.2 | Engineer Approval | 21d | 2025-10-28 | 2025-11-26 | 60 |  |  | 2025-10-28 | 2025-11-26 | 21d | 189d | 0d |
| 62 | 1.6.1.4.3 | Order passed | 5d | 2025-11-26 | 2025-12-03 | 61 |  |  | 2025-11-26 | 2025-12-03 | 5d | 189d | 0d |
| 63 | 1.6.1.4.4 | Delivery on site (for all the batches) | 40d | 2025-12-03 | 2026-01-28 | 62 |  |  | 2025-12-03 | 2026-01-28 | 40d | 189d |  |
| 64 | 1.6.1.5 | **Ship and barge fenders** | 211d | 2025-09-21 | 2026-08-03 |  |  |  | 2025-09-21 | 2026-08-03 | 211d | 46d |  |
| 65 | 1.6.1.5.1 | Product submission | 25d | 2025-09-21 | 2025-11-03 | 4FS+270d |  |  | 2025-09-21 | 2025-11-03 | 25d | 46d | 0d |
| 66 | 1.6.1.5.2 | Engineer Approval | 21d | 2025-11-03 | 2025-12-02 | 65 |  |  | 2025-11-03 | 2025-12-02 | 21d | 46d | 0d |
| 67 | 1.6.1.5.3 | Order passed | 10d | 2025-12-02 | 2025-12-16 | 66 |  |  | 2025-12-02 | 2025-12-16 | 10d | 46d | 0d |
| 68 | 1.6.1.5.4 | Delivery on site (for all the batches) | 155d | 2025-12-16 | 2026-08-03 | 67 |  |  | 2025-12-16 | 2026-08-03 | 155d | 46d |  |
| 69 | 1.6.1.6 | **Bollards and related equipment** | 256d | 2025-09-21 | 2026-10-06 |  |  |  | 2025-09-21 | 2026-10-06 | 256d | 5d |  |
| 70 | 1.6.1.6.1 | Product submission | 25d | 2025-09-21 | 2025-11-03 | 4FS+270d |  |  | 2025-09-21 | 2025-11-03 | 25d | 5d | 0d |
| 71 | 1.6.1.6.2 | Engineer Approval | 21d | 2025-11-03 | 2025-12-02 | 70 |  |  | 2025-11-03 | 2025-12-02 | 21d | 5d | 0d |
| 72 | 1.6.1.6.3 | Order passed | 10d | 2025-12-02 | 2025-12-16 | 71 |  |  | 2025-12-02 | 2025-12-16 | 10d | 5d | 0d |
| 73 | 1.6.1.6.4 | Delivery on site (for all the batches) | 200d | 2025-12-16 | 2026-10-06 | 72 |  |  | 2025-12-16 | 2026-10-06 | 200d | 5d |  |
| 74 | 1.6.1.7 | **Glavanized and coated ladders** | 256d | 2025-09-21 | 2026-10-06 |  |  |  | 2025-09-21 | 2026-10-06 | 256d | 33d |  |
| 75 | 1.6.1.7.1 | Product submission | 25d | 2025-09-21 | 2025-11-03 | 4FS+270d |  |  | 2025-09-21 | 2025-11-03 | 25d | 33d | 0d |
| 76 | 1.6.1.7.2 | Engineer Approval | 21d | 2025-11-03 | 2025-12-02 | 75 |  |  | 2025-11-03 | 2025-12-02 | 21d | 33d | 0d |
| 77 | 1.6.1.7.3 | Order passed | 10d | 2025-12-02 | 2025-12-16 | 76 |  |  | 2025-12-02 | 2025-12-16 | 10d | 33d | 0d |
| 78 | 1.6.1.7.4 | Delivery on site (for all the batches) | 200d | 2025-12-16 | 2026-10-06 | 77 |  |  | 2025-12-16 | 2026-10-06 | 200d | 33d |  |

Notes:
- 58: 23/12/24: expected 16/06/2025 in Antwerp + delivery to Haifa + verification + Engineer's approval - expected availability 26/07/2025...

| ID | WBS | Task | Type | Duration | Start | Finish | Predecessors | Complete | Remaining | Baseline start | Baseline finish | Baseline duration | Total slack | Free slack |
| --- | --- | --- | --- | --- | --- | --- | --- | --- | --- | --- | --- | --- | --- | --- |
| 79 | 1.6.1.8 | **Quick release hooks and integral capstans incl. equipment** |  | 256d | 2025-09-21 | 2026-10-06 |  |  |  | 2025-09-21 | 2026-10-06 | 256d | 11d |  |
| 80 | 1.6.1.8.1 | Product submission |  | 25d | 2025-09-21 | 2025-11-03 | 4FS+270d |  |  | 2025-09-21 | 2025-11-03 | 25d | 11d | 0d |
| 81 | 1.6.1.8.2 | Engineer Approval |  | 21d | 2025-11-03 | 2025-12-02 | 80 |  |  | 2025-11-03 | 2025-12-02 | 21d | 11d | 0d |
| 82 | 1.6.1.8.3 | Order passed |  | 10d | 2025-12-02 | 2025-12-16 | 81 |  |  | 2025-12-02 | 2025-12-16 | 10d | 11d | 0d |
| 83 | 1.6.1.8.4 | Delivery on site (for all the batches) |  | 200d | 2025-12-16 | 2026-10-06 | 82 |  |  | 2025-12-16 | 2026-10-06 | 200d | 11d |  |
| 84 | 1.6.1.9 | **Galvanized and coated walkways** |  | 192d | 2025-05-12 | 2026-02-18 |  |  |  | 2025-05-12 | 2026-02-18 | 192d | 70.33d |  |
| 85 | 1.6.1.9.1 | Product submission |  | 21d | 2025-05-12 | 2025-06-16 | 4FS+180d |  |  | 2025-05-12 | 2025-06-16 | 21d | 70.33d | 0d |
| 86 | 1.6.1.9.2 | Engineer Approval |  | 21d | 2025-06-16 | 2025-07-15 | 85 |  |  | 2025-06-16 | 2025-07-15 | 21d | 70.33d | 0d |
| 87 | 1.6.1.9.3 | Order passed |  | 10d | 2025-07-15 | 2025-07-29 | 86 |  |  | 2025-07-15 | 2025-07-29 | 10d | 70.33d | 0d |
| 88 | 1.6.1.9.4 | Delivery on site (for all the batches) |  | 140d | 2025-07-29 | 2026-02-18 | 87 |  |  | 2025-07-29 | 2026-02-18 | 140d | 70.33d |  |
| 89 | 1.6.1.10 | **Vibrostone fill** |  | 254d | 2024-08-21 A | 2025-08-28 |  | 45% | 140.78d | 2024-08-21 | 2025-05-28 | 192d | 79d |  |
| 90 | 1.6.1.10.1 | Product submission |  | 103d | 2024-08-21 A | 2025-01-16 A | 4 | 100% |  | 2024-08-21 | 2024-09-18 | 21d |  |  |
| 91 | 1.6.1.10.2 | Engineer Approval |  | 21d | 2025-01-16 A | 2025-02-16 | 90 | 49% | 10.78d | 2024-09-19 | 2024-10-22 | 21d | 79d | 0d |
| 92 | 1.6.1.10.3 | Order passed |  | 10d | 2025-02-16 | 2025-03-02 | 91 |  |  | 2024-10-22 | 2024-11-06 | 10d | 79d | 0d |
| 93 | 1.6.1.10.4 | Delivery on site (for all the batches) |  | 120d | 2025-03-02 | 2025-08-28 | 92 |  |  | 2024-11-06 | 2025-05-28 | 140d | 79d | 27d |
| 94 | 1.6.1.11 | **Oil Pipe sleeves** |  | 61d | 2024-08-21 A | 2024-11-19 A |  | 100% |  | 2024-08-21 | 2024-11-04 | 50d |  |  |
| 95 | 1.6.1.11.1 | Product submission |  | 5d | 2024-08-21 A | 2024-08-27 A | 4 | 100% |  | 2024-08-21 | 2024-08-27 | 5d |  |  |
| 96 | 1.6.1.11.2 | Engineer Approval |  | 21d | 2024-08-28 A | 2024-09-25 A | 95 | 100% |  | 2024-08-28 | 2024-09-25 | 21d |  |  |
| 97 | 1.6.1.11.3 | Order passed |  | 5d | 2024-09-26 A | 2024-10-06 A | 96 | 100% |  | 2024-09-26 | 2024-10-06 | 5d |  |  |
| 98 | 1.6.1.11.4 | Delivery on site (for all the batches) |  | 30d | 2024-10-06 A | 2024-11-19 A | 97 | 100% |  | 2024-10-06 | 2024-11-04 | 19d |  |  |
| 99 | 3.1 | **Supply and installation of temporary navigation buoy** |  | 141d | 2024-08-21 A | 2025-03-11 |  | 80% | 27.78d | 2024-08-21 | 2025-01-08 | 97d | -22d | 0d |
| 100 | 1.6.1.12.1 | Product submission |  | 119d | 2024-08-21 A | 2025-02-09 | 4 | 95% | 5.78d | 2024-08-21 | 2024-09-18 | 21d | -30.42d | 0d |
| 101 | 1.6.1.12.2 | Engineer Approval |  | 21d | 2025-02-09 | 2025-03-10 | 100 |  |  | 2024-09-19 | 2024-10-22 | 21d | -30.42d | 0d |
| 102 | 1.6.1.12.3 | Order passed | milestone | 0d | 2025-03-10 | 2025-03-10 | 101 |  |  | 2024-10-22 | 2024-10-30 | 5d | -30.42d | 0d |
| 103 | 1.6.1.12.4 | Delivery on site (for all the batches) |  | 1d | 2025-03-10 | 2025-03-11 | 102 |  |  | 2024-10-30 | 2025-01-08 | 50d | -30.42d | 0d |

Notes:
- 90: 30/01/25: submission of the grading 17/01/25 / 23/12/24: question to Hani is waiting for answer
- 91: 30/01/25: obtained 23/01/25 authorization on grading. Procurement will begin soon before the works
- 100: 30/01/25: expected 08/02/25.
- 103: 23/12/24: we will use second-hand buoy

| ID | WBS | Task | Duration | Start | Finish | Predecessors | Complete | Remaining | Baseline start | Baseline finish | Baseline duration | Total slack | Free slack | Constraint | Work |
| --- | --- | --- | --- | --- | --- | --- | --- | --- | --- | --- | --- | --- | --- | --- | --- |
| 104 | 1.6.2 | **Other products of the BOQ** | 544d | 2024-08-21 A | 2026-11-01 |  | 56% | 236.77d | 2024-08-21 | 2026-11-01 | 544d | 888.44d |  |  |  |
| 105 | 1.6.2.1 | Concrete | 364d | 2025-05-12 | 2026-11-01 | 4FS+180d |  |  | 2025-05-12 | 2026-11-01 | 364d | 4d |  |  |  |
| 106 | 1.6.2.2 | Fences, Gates, Guard Booth | 49d | 2024-08-21 A | 2024-11-03 A | 4 | 100% |  | 2024-08-21 | 2024-11-03 | 49d |  |  |  |  |
| 107 | 2.5 | CCTV | 40d | 2024-08-21 A | 2024-10-20 A | 4 | 100% |  | 2024-08-21 | 2024-10-20 | 40d |  |  |  |  |
| 108 | 1.6.2.4 | UPN profiles for expansion joints | 40d | 2025-04-27 | 2025-06-29 | 4FS+170d |  |  | 2025-04-27 | 2025-06-29 | 40d | 1222.44d |  |  |  |
| 109 | 1.6.2.5 | Drainage manhole | 42d | 2024-08-21 A | 2024-10-22 A | 4 | 100% |  | 2024-08-21 | 2024-10-22 | 42d |  |  |  |  |
| 110 | 1.6.2.6 | 315mm diam. HDPE pipes | 42d | 2024-08-21 A | 2024-10-22 A | 4 | 100% |  | 2024-08-21 | 2024-10-22 | 42d |  |  |  |  |
| 111 | 1.6.2.7 | Round precast manhole | 42d | 2024-08-21 A | 2024-10-22 A | 4 | 100% |  | 2024-08-21 | 2024-10-22 | 42d |  |  |  |  |
| 112 | 1.6.2.8 | HDPE sewage pipline | 42d | 2024-08-21 A | 2024-10-22 A | 4 | 100% |  | 2024-08-21 | 2024-10-22 | 42d |  |  |  |  |
| 113 | 1.6.2.9 | Round manholes | 42d | 2024-08-21 A | 2024-10-22 A | 4 | 100% |  | 2024-08-21 | 2024-10-22 | 42d |  |  |  |  |
| 114 | 1.6.2.10 | MCB cables | 42d | 2024-08-21 A | 2024-10-22 A | 4 | 100% |  | 2024-08-21 | 2024-10-22 | 42d |  |  |  |  |
| 115 | 1.6.2.11 | PVC conduits | 42d | 2024-08-21 A | 2024-10-22 A | 4 | 100% |  | 2024-08-21 | 2024-10-22 | 42d |  |  |  |  |
| 116 | 1.6.2.12 | Ladders and covers | 42d | 2024-08-21 A | 2024-10-22 A | 4 | 100% |  | 2024-08-21 | 2024-10-22 | 42d |  |  |  |  |
| 117 | 2.13 | Sign Boards | 124d | 2024-08-21 A | 2025-02-16 | 4 | 91% | 10.78d | 2024-08-21 | 2024-12-18 | 82d | -23.78d | 0d |  |  |
| 118 | 1.7 | **Construction works** | 1433.44d | 2024-08-20 A | 2030-06-04 |  | 4% | 1381.85d | 2024-11-04 | 2030-03-26 | 1338.76d | 0d |  |  | 3492h |
| 119 | 1.7.1 | **Construction works** | 1433.44d | 2024-08-20 A | 2030-06-04 |  | 4% | 1381.85d | 2024-11-04 | 2030-03-26 | 1338.76d | 0d |  |  | 3492h |
| 120 | 2 | **Milestone 1 - Mobilization** | 79.78d | 2024-11-04 A | 2025-02-23 |  | 93% | 5.96d | 2024-11-04 | 2025-01-20 | 55.78d | 1303.44d |  |  |  |
| 121 | 2.3 | Carry out all the required temporary protections of the existing structures in Quay 8 | 5d | 2025-02-05 | 2025-02-11 | 13, 30, 106 |  |  | 2024-11-04 | 2024-12-01 | 20d | 1311.22d |  | start no earlier than 2025-02-05 |  |
| 122 | 2.14 | Demolition of: Fenders, Bollards and concrete curb on Quay 8 | 9d | 2025-01-28 A | 2025-02-09 | 13, 30, 106 | 33% | 6d | 2024-12-02 | 2024-12-29 | 20d | -19d | 0d | start no earlier than 2025-01-28 |  |
| 123 | 2.7 | **Construction of Quay 8 Access Road and roundabout including the construction of all infrastructures and sleeves beneath it, Road and Traffic signs** | 45d | 2024-11-04 A | 2025-01-05 A |  | 100% |  | 2024-11-04 | 2025-01-05 | 45d |  |  |  |  |
| 124 | 1.7.1.1.3.1 | Earthworks stage 1 | 15d | 2024-11-04 A | 2024-11-24 A | 13, 109 | 100% |  | 2024-11-04 | 2024-11-24 | 15d |  |  |  |  |
| 125 | 1.7.1.1.3.2 | Earthworks stage 2 | 15d | 2024-11-25 A | 2024-12-15 A | 124 | 100% |  | 2024-11-25 | 2024-12-15 | 15d |  |  |  |  |
| 126 | 1.7.1.1.3.3 | Water system | 20d | 2024-11-04 A | 2024-12-01 A | 110, 111, 13 | 100% |  | 2024-11-04 | 2024-12-01 | 20d |  |  |  |  |
| 127 | 1.7.1.1.3.4 | Sewage system | 20d | 2024-11-04 A | 2024-12-01 A | 112, 113, 13 | 100% |  | 2024-11-04 | 2024-12-01 | 20d |  |  |  |  |
| 128 | 1.7.1.1.3.5 | Electrical & Communication system | 10d | 2024-12-09 A | 2024-12-22 A | 114, 115, 116, 125SS+10d | 100% |  | 2024-12-09 | 2024-12-22 | 10d |  |  |  |  |
| 129 | 1.7.1.1.3.6 | Completion of systems installation | 10d | 2024-12-23 A | 2025-01-05 A | 126, 127, 128 | 100% |  | 2024-12-23 | 2025-01-05 | 10d |  |  |  |  |
| 130 | 1.7.1.1.3.7 | Set up of Offices, warehouses, workshops,mobile shelters, laboratory facilities, etc. | 15d | 2024-12-16 A | 2025-01-05 A | 107, 125 | 100% |  | 2024-12-16 | 2025-01-05 | 15d |  |  |  |  |

Notes:
- 117: 30/01/25: waiting for approval. Issue with foundations. Expected 16/02/25 / 23/12/24: waiting for approval
- 121: 30/01/25: expected 05/02/25. In accordance with Adir / 23/12/24: expected to begin 05/01/25
- 122: 30/01/25: works began. Expected finish 08/02 for the majority of the works. Finition of works expected during MS 3 / 06/01/25: finish 20/01/25 / 23/12/24: the Engineer want to change the work procedure. Task expected to begin 05/01/25

| ID | WBS | Task | Type | Duration | Start | Finish | Predecessors | Complete | Baseline start | Baseline finish | Baseline duration | Total slack | Free slack | Constraint | Resources | Work | LBS legend | units |
| --- | --- | --- | --- | --- | --- | --- | --- | --- | --- | --- | --- | --- | --- | --- | --- | --- | --- | --- |
| 131 | 2.8 | **Works in the fuel pipes sleeves installation zone** |  | 50d | 2024-11-04 A | 2025-01-13 A |  | 100% | 2024-11-04 | 2025-01-13 | 50d |  |  |  |  |  |  |  |
| 132 | 1.7.1.1.4.1 | Fuel pipes sleeves installation stage 1 |  | 20d | 2024-11-04 A | 2024-12-02 A | 98 | 100% | 2024-11-04 | 2024-12-02 | 20d |  |  |  |  |  |  |  |
| 133 | 1.7.1.1.4.2 | Fuel pipes sleeves installation stage 2 |  | 20d | 2024-12-02 A | 2024-12-30 A | 132 | 100% | 2024-12-02 | 2024-12-30 | 20d |  |  |  |  |  |  |  |
| 134 | 1.7.1.1.4.3 | Earthworks after fuel pipes sleeves installation |  | 10d | 2024-12-30 A | 2025-01-13 A | 133 | 100% | 2024-12-30 | 2025-01-13 | 10d |  |  |  |  |  |  |  |
| 135 | 1.7.1.1.4.4 | Water system after fuel pipes sleeves installation |  | 10d | 2024-12-30 A | 2025-01-13 A | 133 | 100% | 2024-12-30 | 2025-01-13 | 10d |  |  |  |  |  |  |  |
| 136 | 1.7.1.1.4.5 | Sewage system after fuel pipes sleeves installation |  | 10d | 2024-12-30 A | 2025-01-13 A | 133 | 100% | 2024-12-30 | 2025-01-13 | 10d |  |  |  |  |  |  |  |
| 137 | 1.7.1.1.4.6 | Electrical system after fuel pipes sleeves installation |  | 10d | 2024-12-30 A | 2025-01-13 A | 133 | 100% | 2024-12-30 | 2025-01-13 | 10d |  |  |  |  |  |  |  |
| 138 | 1.7.1.1.4.7 | Communication system after fuel pipes sleeves installation |  | 10d | 2024-12-30 A | 2025-01-13 A | 133 | 100% | 2024-12-30 | 2025-01-13 | 10d |  |  | start no earlier than 2024-11-17 |  |  |  |  |
| 139 | 1.7.1.1.5 | Finishing works and handover preparation |  | 5d | 2025-02-16 | 2025-02-23 | 134, 130, 135, 136, 137, 138, 117, 122, 129 |  | 2025-01-13 | 2025-01-20 | 5d | -23.78d | 0d |  |  |  |  |  |
| 140 | 1.7.1.1.6 | Milestone 1 Completion | milestone | 0d | 2025-02-23 | 2025-02-23 | 139 |  | 2025-01-20 | 2025-01-20 | 0d | -23.78d | 0d |  |  |  |  |  |
| 141 | 3 | **Milestone 2 - Sheet Piles (South and North Main walls) - 100m, Sheet Piles of Eastern Closure wall** |  | 214d | 2024-08-20 | 2025-07-02 |  |  | 2025-01-08 | 2025-06-05 | 99d | 111.58d |  |  |  | 369h |  |  |
| 142 | 1.7.1.2.1 | Installation temporary navigation buoy |  | 2d | 2025-03-11 | 2025-03-13 | 103, 15 |  | 2025-01-08 | 2025-01-12 | 2d | -30.42d | 0d | start no earlier than 2025-02-28 |  |  |  |  |
| 143 | 1.7.1.2.2 | Dredge seabed mud/rocks down to top of dune sand for the sand berm (width of about 150m and length of about 700m) |  | 35d | 2025-04-03 | 2025-05-26 | 17, 33, 21, 34, 142, 18 |  | 2025-01-30 | 2025-06-05 | 83d | -42.42d | 0d |  | Dredging Team & Equipment | 315h | Dredge seabed + locally dredge closure wall to -15 m |  |
| 144 | 3.2 | locally dredge the closure wall area to elevation -15 m. |  | 6d | 2025-04-15 | 2025-04-23 | 143SS+2% |  | 2025-01-12 | 2025-01-30 | 14d | -39.67d | 0d |  | Dredging Team & Equipment | 54h |  |  |
| 145 | 1.7.1.2.4 | Fill suitable material to build the sand berm (the bottom of the berm will be about 70 m. width and 450 m. Long) to elevation -5m |  | 35d | 2025-04-14 | 2025-06-04 | 143SS+1.5% |  |  |  |  | -42.42d | 0d |  |  |  | Fill suitable material to build the sand berm |  |
| 146 | 1.7.1.2.5 | **Drive HZ & AZ piles, beginning at Quay 8.** |  | 38d | 2025-05-05 | 2025-07-02 |  |  |  |  |  | -46.67d | 0d |  |  |  |  |  |
| 147 | 1.7.1.2.5.1 | Drive Eastern closure wall |  | 4d | 2025-05-05 | 2025-05-11 | 145SS+3%, 144, 44 |  |  |  |  | -46.67d | 0d |  |  |  | Drive easteren closure wall |  |
| 148 | 1.7.1.2.5.2 | Drive north and south HZ & AZ piles from 0 to 50 m |  | 17d | 2025-05-11 | 2025-06-05 | 147 |  |  |  |  | -46.67d | 0d |  |  |  | Drive both north and south HZ & AZ piles |  |
| 149 | 1.7.1.2.5.3 | Drive north and south HZ & AZ piles from 50 to 100 m |  | 17d | 2025-06-05 | 2025-07-02 | 148 |  |  |  |  | -30.67d | 0d |  |  |  |  |  |
| 150 | 1.7.1.2.6 | Milestone 2 Completion | milestone | 0d | 2024-08-20 | 2024-08-20 |  |  | 2025-06-05 | 2025-06-05 | 0d | 1433.44d |  |  |  |  |  |  |
| 151 | 4 | **Milestone 3 - Completion of all Steel Sheet Pile works in accordance with the Design** |  | 428d | 2024-08-20 | 2026-05-14 |  |  | 2025-05-20 | 2025-10-05 | 91d | 166.33d |  |  |  |  |  |  |
| 152 | 4.1 | Fill area between two concrete plugs and closure wall and existing quay 8 wall with crushed stone |  | 5d | 2024-08-20 | 2024-08-26 |  |  | 2025-06-05 | 2025-06-16 | 5d | 1428.44d |  |  |  |  |  |  |
| 153 | 1.7.1.3.2 | **Dredging works** |  | 112d | 2025-12-01 | 2026-05-14 |  |  | 2025-06-05 | 2025-09-28 | 77d | -47.67d | 0d |  |  |  |  |  |
| 154 | 1.7.1.3.2.1 | Dredging for scoure protection |  | 64d | 2025-12-01 | 2026-03-01 | 192 |  |  |  |  | -47.67d | 0d |  |  |  | Dredging for scoure protection |  |
| 155 | 1.7.1.3.2.2 | Scour protection works |  | 64d | 2026-01-14 | 2026-04-20 | 154SS+5% |  | 2026-10-13 | 2026-11-05 | 17d | 137d | 0d |  |  |  | Scour protection works | m2 |
| 156 | 1.7.1.3.2.3 | Dredging for Dolphins preimeter down to -14.0m |  | 48d | 2026-03-01 | 2026-05-14 | 154 |  |  |  |  | -47.67d | 0d |  |  |  | Dredging to EL -14 |  |

Notes:
- 155: MS5

| ID | WBS | Task | Duration | Start | Finish | Predecessors | Baseline start | Baseline finish | Baseline duration | Total slack | Free slack | LBS legend |
| --- | --- | --- | --- | --- | --- | --- | --- | --- | --- | --- | --- | --- |
| 157 | 1.7.1.3.3 | **Completion of walls** | 343d | 2024-08-20 | 2026-01-07 |  | 2025-05-20 | 2025-08-26 | 66d | 184.33d |  |  |
| 158 | 1.7.1.3.3.1 | Drive north and south HZ & AZ piles from 100 to 150 m | 16d | 2025-07-27 | 2025-08-18 | 149, 45 |  |  |  | -46.67d | 0d |  |
| 159 | 1.7.1.3.3.2 | Drive north and south HZ & AZ piles from 150 to 200 m | 16d | 2025-08-18 | 2025-09-09 | 158 |  |  |  | -43.67d | 0d |  |
| 160 | 1.7.1.3.3.3 | Drive north and south HZ & AZ piles from 200 to 250 m | 16d | 2025-09-09 | 2025-10-08 | 159 |  |  |  | 80d | 0d |  |
| 161 | 1.7.1.3.3.4 | Drive north and south HZ & AZ piles from 250 to 300 m | 16d | 2025-10-08 | 2025-11-02 | 160 |  |  |  | 80d | 0d |  |
| 162 | 1.7.1.3.3.5 | Drive north and south HZ & AZ piles from 300 to 350 m | 16d | 2025-11-02 | 2025-11-24 | 161 |  |  |  | 80d | 0d |  |
| 163 | 1.7.1.3.3.6 | Drive north and south HZ & AZ piles from 350 to 380 m | 10d | 2025-11-24 | 2025-12-08 | 162 |  |  |  | 96d | 0d |  |
| 164 | 1.7.1.3.3.7 | Drive north and south HZ & AZ piles from 380 to 425 m | 18d | 2025-12-08 | 2026-01-01 | 163 |  |  |  | 1004.44d | 0d |  |
| 165 | 1.7.1.3.3.8 | Driving anchor wall | 4d | 2025-12-08 | 2025-12-14 | 163 |  |  |  | 1104.44d | 14d | Driving anchor wall |
| 166 | 1.7.1.3.3.9 | Driving western closure wall | 4d | 2026-01-01 | 2026-01-07 | 164, 165 |  |  |  | 1090.44d |  | Driving western closure wall |
| 167 | 1.7.1.3.3.10 | Weld Eastern closure wall steel formwork plate | 10d | 2024-08-20 | 2024-09-02 |  |  |  |  | 1423.44d |  | Weld Eastern closure wall |
| 168 | 1.7.1.3.4 | **Reclamation up to elevation +0.0** | 144d | 2025-07-01 | 2026-01-27 |  |  |  |  | -46.67d | 0d |  |
| 169 | 1.7.1.3.4.1 | Reclamation el. +0.0 from 0 to 50 m | 17d | 2025-07-01 | 2025-07-24 | 148FS+16d |  |  |  | -46.67d | 0d | Reclamation up to elevation +0.0 |
| 170 | 1.7.1.3.4.2 | Reclamation el. +0.0 from 50 to 100 m | 17d | 2025-07-24 | 2025-08-18 | 169, 149 |  |  |  | -46.67d | 0d |  |
| 171 | 1.7.1.3.4.3 | Reclamation el. +0.0 from 100 to 150 m | 17d | 2025-08-18 | 2025-09-10 | 170, 158 |  |  |  | -46.67d | 0d |  |
| 172 | 1.7.1.3.4.4 | Reclamation el. +0.0 from 150 to 200 m | 16d | 2025-09-10 | 2025-10-09 | 171, 159 |  |  |  | -44.67d | 0d |  |
| 173 | 1.7.1.3.4.5 | Reclamation el. +0.0 from 200 to 250 m | 16d | 2025-10-09 | 2025-11-03 | 172, 160 |  |  |  | 79d | 0d |  |
| 174 | 1.7.1.3.4.6 | Reclamation el. +0.0 from 250 to 300 m | 16d | 2025-11-03 | 2025-11-25 | 173, 161 |  |  |  | 79d | 0d |  |
| 175 | 1.7.1.3.4.7 | Reclamation el. +0.0 from 300 to 350 m | 16d | 2025-11-25 | 2025-12-17 | 174, 162 |  |  |  | 79d | 0d |  |
| 176 | 1.7.1.3.4.8 | Reclamation el. +0.0 from 350 to 380 m | 11d | 2025-12-17 | 2026-01-01 | 175, 163 |  |  |  | 89d | 0d |  |
| 177 | 1.7.1.3.4.9 | Reclamation el. +0.0 from 380 to 425 m | 18d | 2026-01-01 | 2026-01-27 | 176, 164 |  |  |  | 1004.44d | 0d |  |
| 178 | 1.7.1.3.5 | **Tie rod installation and tension** | 144d | 2025-07-27 | 2026-02-22 |  | 2025-08-25 | 2025-10-05 | 26d | -47.67d | 0d |  |
| 179 | 1.7.1.3.5.1 | Tie-rod install. and tension from 0 to 50 m | 17d | 2025-07-27 | 2025-08-19 | 169, 58 |  |  |  | -47.67d | 0d | Tie rod installation and tension |
| 180 | 1.7.1.3.5.2 | Tie-rod install. and tension from 50 to 100 m | 17d | 2025-08-19 | 2025-09-11 | 170, 179 |  |  |  | -47.67d | 0d |  |
| 181 | 1.7.1.3.5.3 | Tie-rod install. and tension from 100 to 150 m | 17d | 2025-09-11 | 2025-10-13 | 171, 180 |  |  |  | -47.67d | 0d |  |
| 182 | 1.7.1.3.5.4 | Tie-rod install. and tension from 150 to 200 m | 16d | 2025-10-13 | 2025-11-05 | 172, 181 |  |  |  | -46.67d | 0d |  |
| 183 | 1.7.1.3.5.5 | Tie-rod install. and tension from 200 to 250 m | 16d | 2025-11-05 | 2025-11-27 | 173, 182 |  |  |  | 77d | 0d |  |
| 184 | 1.7.1.3.5.6 | Tie-rod install. and tension from 250 to 300 m | 16d | 2025-11-27 | 2025-12-21 | 174, 183 |  |  |  | 77d | 0d |  |
| 185 | 1.7.1.3.5.7 | Tie-rod install. and tension from 300 to 350 m | 16d | 2025-12-21 | 2026-01-12 | 175, 184 |  |  |  | 77d | 0d |  |
| 186 | 1.7.1.3.5.8 | Tie-rod install. and tension from 350 to 380 m | 11d | 2026-01-12 | 2026-01-27 | 176, 185 |  |  |  | 82d | 0d |  |
| 187 | 1.7.1.3.5.9 | Tie-rod install. and tension from 380 to 425 m | 18d | 2026-01-27 | 2026-02-22 | 177, 186 |  |  |  | 1004.44d | 0d |  |

Notes:
- 167: Includes concrete plugs casting and gravel filling

| ID | WBS | Task | Type | Duration | Start | Finish | Predecessors | Baseline start | Baseline finish | Baseline duration | Total slack | Free slack | Resources | Work |
| --- | --- | --- | --- | --- | --- | --- | --- | --- | --- | --- | --- | --- | --- | --- |
| 188 | 1.7.1.3.6 | **Reclamation up to elevation +1.4.** |  | 145d | 2025-08-19 | 2026-03-18 |  |  |  |  | -47.67d | 0d |  |  |
| 189 | 1.7.1.3.6.1 | Reclamation el. +1.4. from 0 to 50 m + dredging of the excess sand of the berm outside the walls |  | 17d | 2025-08-19 | 2025-09-11 | 179, 145 |  |  |  | -47.67d | 0d |  |  |
| 190 | 1.7.1.3.6.2 | Reclamation el. +1.4. from 50 to 100 m |  | 17d | 2025-09-11 | 2025-10-13 | 180, 189 |  |  |  | -47.67d | 0d |  |  |
| 191 | 1.7.1.3.6.3 | Reclamation el. +1.4. from 100 to 150 m |  | 17d | 2025-10-13 | 2025-11-06 | 181, 190 |  |  |  | -47.67d | 0d |  |  |
| 192 | 1.7.1.3.6.4 | Reclamation el. +1.4. from 150 to 200 m |  | 17d | 2025-11-06 | 2025-12-01 | 182, 191 |  |  |  | -47.67d | 0d |  |  |
| 193 | 1.7.1.3.6.5 | Reclamation el. +1.4. from 200 to 250 m |  | 16d | 2025-12-01 | 2025-12-23 | 183, 192 |  |  |  | 75d | 0d |  |  |
| 194 | 1.7.1.3.6.6 | Reclamation el. +1.4. from 250 to 300 m |  | 16d | 2025-12-23 | 2026-01-14 | 184, 193 |  |  |  | 75d | 0d |  |  |
| 195 | 1.7.1.3.6.7 | Reclamation el. +1.4. from 300 to 350 m |  | 16d | 2026-01-14 | 2026-02-05 | 185, 194 |  |  |  | 75d | 0d |  |  |
| 196 | 1.7.1.3.6.8 | Reclamation el. +1.4. from 350 to 380 m |  | 11d | 2026-02-05 | 2026-02-22 | 186, 195 |  |  |  | 75d | 0d |  |  |
| 197 | 1.7.1.3.6.9 | Reclamation el. +1.4. from 380 to 425 m |  | 18d | 2026-02-22 | 2026-03-18 | 187, 196 |  |  |  | 1004.44d | 36d |  |  |
| 198 | 1.7.1.3.7 | Milestone 3 Completion | milestone | 0d | 2024-08-20 | 2024-08-20 |  | 2025-10-05 | 2025-10-05 | 0d | 1433.44d |  |  |  |
| 199 | 5 | **Milestone 4 - Completion of Vibroflotation W/Stone Columns and Final Tensioning of Tie Rods** |  | 498d | 2024-08-20 | 2026-08-25 |  | 2025-09-17 | 2026-06-18 | 181d | 334d |  |  | 2088h |
| 200 | 1.7.1.4.1 | General dredging works |  | 176d | 2024-08-20 | 2025-05-05 |  | 2025-09-28 | 2026-06-18 | 176d | 1257.44d |  | Dredging Team & Equipment | 1584h |
| 201 | 1.7.1.4.2 | **Vibroflotation with Stone Column** |  | 165d | 2025-10-13 | 2026-06-15 |  | 2025-12-14 | 2026-04-19 | 87d | 52d |  |  |  |
| 202 | 1.7.1.4.2.1 | Proof testing vibro 1st point |  | 2d | 2025-10-13 | 2025-10-16 | 93, 190 |  |  |  | 52d | 0d |  |  |
| 203 | 1.7.1.4.2.2 | Proof testing vibro 2nd point |  | 2d | 2025-12-23 | 2025-12-25 | 193 |  |  |  | 86d | 16d |  |  |
| 204 | 1.7.1.4.2.3 | Proof testing vibro 3rd point |  | 2d | 2026-02-22 | 2026-02-24 | 196 |  |  |  | 75d | 5d |  |  |
| 205 | 1.7.1.4.2.4 | Vibroflotation from 0 to 50 m |  | 17d | 2025-11-16 | 2025-12-09 | 202FS+21d, 189 |  |  |  | 52d | 0d |  |  |
| 206 | 1.7.1.4.2.5 | Vibroflotation from 50 to 100 m |  | 17d | 2025-12-09 | 2026-01-01 | 205, 190 |  |  |  | 69d | 0d |  |  |
| 207 | 1.7.1.4.2.6 | Vibroflotation from 100 to 150 m |  | 16d | 2026-01-01 | 2026-01-25 | 206, 191 |  |  |  | 70d | 0d |  |  |
| 208 | 1.7.1.4.2.7 | Vibroflotation from 150 to 200 m |  | 16d | 2026-01-25 | 2026-02-16 | 207, 192 |  |  |  | 70d | 0d |  |  |
| 209 | 1.7.1.4.2.8 | Vibroflotation from 200 to 250 m |  | 16d | 2026-02-16 | 2026-03-10 | 208, 193, 203FS+21d |  |  |  | 70d | 0d |  |  |
| 210 | 1.7.1.4.2.9 | Vibroflotation from 250 to 300 m |  | 16d | 2026-03-10 | 2026-04-06 | 209, 194 |  |  |  | 70d | 0d |  |  |
| 211 | 1.7.1.4.2.10 | Vibroflotation from 300 to 350 m |  | 16d | 2026-04-06 | 2026-05-03 | 210, 195, 204FS+21d |  |  |  | 70d | 0d |  |  |
| 212 | 1.7.1.4.2.11 | Vibroflotation from 350 to 380 m |  | 10d | 2026-05-03 | 2026-05-17 | 211, 196 |  |  |  | 76d | 0d |  |  |
| 213 | 1.7.1.4.2.12 | Vibroflotation from 380 to 425 m |  | 18d | 2026-05-17 | 2026-06-15 | 212, 197 |  |  |  | 968.44d | 0d |  |  |

Notes:
- 189: LBS legend: Dredging of the excess sand of the berm outside the walls + reclamation up to elevation +1.4.
- 200: LBS legend: General dredging
- 202: LBS legend: Proof testing vibro 1st point
- 203: LBS legend: Proof testing vibro 2nd point
- 204: LBS legend: Proof testing vibro 3rd point
- 205: LBS legend: Vibroflotation

| ID | WBS | Task | Duration | Start | Finish | Predecessors | Baseline start | Baseline finish | Baseline duration | Total slack | Free slack | Resources | Work | LBS legend |
| --- | --- | --- | --- | --- | --- | --- | --- | --- | --- | --- | --- | --- | --- | --- |
| 214 | 1.7.1.4.3 | **Excavating to +1.0 + local arrangement for fascia beam** | 143d | 2025-12-09 | 2026-07-09 |  |  |  |  | 52d |  |  |  |  |
| 215 | 1.7.1.4.3.1 | Excavating to +1.0 + local arr. for fascia beam from 0 to 50 m | 17d | 2025-12-09 | 2026-01-01 | 205 |  |  |  | 52d | 0d |  |  | Excavating to +1.0 + local arrangement for fascia beam |
| 216 | 1.7.1.4.3.2 | Excavating to +1.0 + local arr. for fascia beam from 50 to 100 m | 17d | 2026-01-01 | 2026-01-26 | 206, 215 |  |  |  | 69d | 0d |  |  |  |
| 217 | 1.7.1.4.3.3 | Excavating to +1.0 + local arr. for fascia beam from 100 to 150 m | 16d | 2026-01-26 | 2026-02-17 | 207, 216 |  |  |  | 69d | 0d |  |  |  |
| 218 | 1.7.1.4.3.4 | Excavating to +1.0 + local arr. for fascia beam from 150 to 200 m | 16d | 2026-02-17 | 2026-03-11 | 208, 217 |  |  |  | 69d | 0d |  |  |  |
| 219 | 1.7.1.4.3.5 | Excavating to +1.0 + local arr. for fascia beam from 200 to 250 m | 16d | 2026-03-11 | 2026-04-07 | 209, 218 |  |  |  | 69d | 0d |  |  |  |
| 220 | 1.7.1.4.3.6 | Excavating to +1.0 + local arr. for fascia beam from 250 to 300 m | 16d | 2026-04-07 | 2026-05-04 | 210, 219 |  |  |  | 69d | 0d |  |  |  |
| 221 | 1.7.1.4.3.7 | Excavating to +1.0 + local arr. for fascia beam from 300 to 350 m | 16d | 2026-05-04 | 2026-05-31 | 211, 220 |  |  |  | 69d | 0d |  |  |  |
| 222 | 1.7.1.4.3.8 | Excavating to +1.0 + local arr. for fascia beam from 350 to 380 m | 10d | 2026-05-31 | 2026-06-14 | 212, 221 |  |  |  | 69d | 1d |  |  |  |
| 223 | 1.7.1.4.3.9 | Excavating to +1.0 + local arr. for fascia beam from 380 to 425 m | 18d | 2026-06-15 | 2026-07-09 | 213, 222 |  |  |  | 968.44d |  |  |  |  |
| 224 | 1.7.1.4.4 | **Dolphins** | 70d | 2026-05-14 | 2026-08-25 |  | 2025-10-06 | 2026-03-11 | 110d | -47.67d | 0d |  | 504h |  |
| 225 | 1.7.1.4.4.1 | PDA testing for 1st Dolphin | 7d | 2026-05-14 | 2026-05-25 | 53, 156 | 2025-10-06 | 2025-10-29 | 15d | -47.67d | 0d |  |  | PDA testing |
| 226 | 1.7.1.4.4.2 | Drive SPP 1st Dolphin | 21d | 2026-05-25 | 2026-06-28 | 225, 25 | 2025-10-29 | 2025-11-19 | 15d | -47.67d | 0d | Dolphin Pile Driving Team & Equipment | 189h | Drive SPP |
| 227 | 1.7.1.4.4.3 | Install support frame for 1st Dolphin concrete form | 7d | 2026-08-05 | 2026-08-16 | 229 | 2025-12-31 | 2026-01-21 | 15d | -47.67d | 0d | Dolphin Pile Driving Team & Equipment | 63h | Ins. Supp. Frame |
| 228 | 1.7.1.4.4.4 | PDA testing for 2nd Dolphin | 7d | 2026-06-28 | 2026-07-07 | 226 | 2025-11-19 | 2025-12-10 | 15d | -47.67d | 0d |  |  | PDA testing |
| 229 | 1.7.1.4.4.5 | Drive SPP 2nd Dolphin | 21d | 2026-07-07 | 2026-08-05 | 228 | 2025-12-10 | 2025-12-31 | 15d | -47.67d | 0d | Dolphin Pile Driving Team & Equipment | 189h | Drive SPP |
| 230 | 1.7.1.4.4.6 | Install support frame for 2nd Dolphin concrete form | 7d | 2026-08-16 | 2026-08-25 | 227, 88 | 2026-02-18 | 2026-03-11 | 15d | -47.67d | 0d | Dolphin Pile Driving Team & Equipment | 63h | Ins. Supp. Frame |
| 231 | 1.7.1.4.5 | **Fascia beam - casting in parallel on North and South sides** | 82d | 2026-01-01 | 2026-05-05 |  | 2026-02-01 | 2026-05-24 | 75d | 52d |  |  |  |  |
| 232 | 1.7.1.4.5.1 | Fascia beam from 0 to 50 m | 17d | 2026-01-01 | 2026-01-26 | 215 |  |  |  | 52d | 0d |  |  | Fascia beam |
| 233 | 1.7.1.4.5.2 | Eastern capping beam | 7d | 2026-01-26 | 2026-02-04 | 232 |  |  |  | 910.44d | 0d |  |  | Eastern capping beam |
| 234 | 1.7.1.4.5.3 | Fascia beam from 50 to 100 m | 17d | 2026-01-26 | 2026-02-18 | 232, 215 |  |  |  | 52d | 0d |  |  |  |
| 235 | 1.7.1.4.5.4 | Fascia beam from 100 to 150 m | 16d | 2026-02-18 | 2026-03-12 | 234, 216 |  |  |  | 52d | 0d |  |  |  |
| 236 | 1.7.1.4.5.5 | Fascia beam from 150 to 200 m | 16d | 2026-03-12 | 2026-04-09 | 235, 217 |  |  |  | 52d | 0d |  |  |  |
| 237 | 1.7.1.4.5.6 | Fascia beam from 200 to 250 m | 16d | 2026-04-09 | 2026-05-05 | 236, 218 |  |  |  | 52d | 0d |  |  |  |

| ID | WBS | Task | Type | Duration | Start | Finish | Predecessors | Baseline start | Baseline finish | Baseline duration | Total slack | Free slack | Resources | Work | LBS legend |
| --- | --- | --- | --- | --- | --- | --- | --- | --- | --- | --- | --- | --- | --- | --- | --- |
| 238 | 1.7.1.4.6 | **Stations installation** |  | 9d | 2024-08-20 | 2024-09-01 |  | 2026-01-19 | 2026-05-04 | 70d | 415d |  |  |  |  |
| 239 | 1.7.1.4.6.1 | Station 1 |  | 9d | 2024-08-20 | 2024-09-01 |  | 2026-01-19 | 2026-02-01 | 9d | 441.33d |  |  |  |  |
| 240 | 1.7.1.4.6.2 | Station 2 |  | 9d | 2024-08-20 | 2024-09-01 |  | 2026-02-12 | 2026-02-25 | 9d | 441.33d |  |  |  |  |
| 241 | 1.7.1.4.6.3 | Station 3 |  | 9d | 2024-08-20 | 2024-09-01 |  | 2026-03-10 | 2026-03-24 | 9d | 441.33d |  |  |  |  |
| 242 | 1.7.1.4.6.4 | Station 4 |  | 9d | 2024-08-20 | 2024-09-01 |  | 2026-03-24 | 2026-04-07 | 9d | 441.33d |  |  |  |  |
| 243 | 1.7.1.4.6.5 | Station 5 |  | 9d | 2024-08-20 | 2024-09-01 |  | 2026-04-19 | 2026-05-04 | 9d | 415d | 0d |  |  |  |
| 244 | 1.7.1.4.7 | Milestone 4 Completion | milestone | 0d | 2026-08-25 | 2026-08-25 | 230, 241, 242, 243, 240, 239 | 2026-06-18 | 2026-06-18 | 0d | -47.67d | 0d |  |  |  |
| 245 | 6 | **Milestone 5 - Completion of Mooring Dolphins Concrete Pile Caps and Completion of Fascia Beam and Capping Beam concrete works** |  | 596d | 2024-08-20 | 2027-01-11 |  | 2026-05-24 | 2026-11-05 | 114d | 473d |  |  | 837h |  |
| 246 | 1.7.1.5.1 | **Fascia beam - casting in parallel on North and South sides** |  | 65d | 2026-05-05 | 2026-08-09 |  | 2026-05-24 | 2026-09-09 | 75d | 52d |  |  |  |  |
| 247 | 1.7.1.5.1.1 | Fascia beam from 250 to 300 m |  | 16d | 2026-05-05 | 2026-06-01 | 237, 219 |  |  |  | 52d | 0d |  |  |  |
| 248 | 1.7.1.5.1.2 | Fascia beam from 300 to 350 m |  | 16d | 2026-06-01 | 2026-06-23 | 247, 220 |  |  |  | 52d | 0d |  |  |  |
| 249 | 1.7.1.5.1.3 | Fascia beam from 350 to 380 m |  | 10d | 2026-06-23 | 2026-07-07 | 248, 221 |  |  |  | 52d | 0d |  |  |  |
| 250 | 1.7.1.5.1.4 | Fascia beam from 380 to 425 m |  | 18d | 2026-07-07 | 2026-08-02 | 249, 222 |  |  |  | 52d | 0d |  |  |  |
| 251 | 1.7.1.5.1.5 | Cast Western Closure Wall Cup Beam including concrete and backwall |  | 5d | 2026-08-02 | 2026-08-09 | 250 | 2026-09-02 | 2026-09-09 | 5d | 52d |  |  |  | Western capping beam |
| 252 | 7.6 | Completion of Inclinometers and Test stations installation and measurements |  | 20d | 2024-10-31 | 2024-11-28 | 243FS+40d | 2026-09-09 | 2026-10-11 | 20d | 480d |  |  |  |  |
| 253 | 6.4 | Dredge all berth pockets to design elevation |  | 22d | 2024-08-20 | 2024-09-18 |  | 2026-09-09 | 2026-10-13 | 22d | 1411.44d |  | Dredging Team & Equipment | 198h |  |
| 254 | 1.7.1.5.4 | **Level working platform to elevation +1.0** |  | 142d | 2026-02-04 | 2026-09-03 |  |  |  |  | 910.44d |  |  |  |  |
| 255 | 1.7.1.5.4.1 | Level working platform to elevation +1.0 from 0 to 50 m |  | 17d | 2026-02-04 | 2026-03-01 | 233 |  |  |  | 910.44d | 0d |  |  | Level working platform to elevation +1.0 |
| 256 | 1.7.1.5.4.2 | Level working platform to elevation +1.0 from 50 to 100 m |  | 17d | 2026-03-01 | 2026-03-25 | 255, 234 |  |  |  | 910.44d | 0d |  |  |  |
| 257 | 1.7.1.5.4.3 | Level working platform to elevation +1.0 from 100 to 150 m |  | 16d | 2026-03-25 | 2026-04-23 | 256, 235 |  |  |  | 910.44d | 0d |  |  |  |
| 258 | 1.7.1.5.4.4 | Level working platform to elevation +1.0 from 150 to 200 m |  | 16d | 2026-04-23 | 2026-05-17 | 257, 236 |  |  |  | 910.44d | 0d |  |  |  |
| 259 | 1.7.1.5.4.5 | Level working platform to elevation +1.0 from 200 to 250 m |  | 16d | 2026-05-17 | 2026-06-11 | 258, 237 |  |  |  | 910.44d | 0d |  |  |  |
| 260 | 1.7.1.5.4.6 | Level working platform to elevation +1.0 from 250 to 300 m |  | 16d | 2026-06-11 | 2026-07-05 | 259, 247 |  |  |  | 910.44d | 0d |  |  |  |
| 261 | 1.7.1.5.4.7 | Level working platform to elevation +1.0 from 300 to 350 m |  | 16d | 2026-07-05 | 2026-07-27 | 260, 248 |  |  |  | 910.44d | 0d |  |  |  |
| 262 | 1.7.1.5.4.8 | Level working platform to elevation +1.0 from 350 to 380 m |  | 10d | 2026-07-27 | 2026-08-10 | 261, 249 |  |  |  | 910.44d | 0d |  |  |  |
| 263 | 1.7.1.5.4.9 | Level working platform to elevation +1.0 from 380 to 425 m |  | 18d | 2026-08-10 | 2026-09-03 | 262, 250 |  |  |  | 910.44d | 0d |  |  |  |

Notes:
- 254: Before fill with controlled compaction

| ID | WBS | Task | Type | Duration | Start | Finish | Predecessors | Baseline start | Baseline finish | Baseline duration | Total slack | Free slack | Resources | Work | units | LBS legend |
| --- | --- | --- | --- | --- | --- | --- | --- | --- | --- | --- | --- | --- | --- | --- | --- | --- |
| 264 | 1.7.1.5.5 | **Mooring Dolphins** |  | 67d | 2026-08-25 | 2026-11-29 |  | 2026-06-18 | 2026-09-24 | 67d | -18d | 0d |  | 639h |  |  |
| 265 | 6.3 | Casting of mooring dolphins pile caps - 1st dophin |  | 22d | 2026-08-25 | 2026-09-28 | 105SS+200d, 8 | 2026-06-18 | 2026-07-20 | 22d | -18d | 0d | Dolphin Pile Driving Team & Equipment | 198h | LS | Pile caps casting |
| 266 | 1.7.1.5.5.2 | Casting of mooring dolphins pile caps - second dolphin |  | 23d | 2026-09-28 | 2026-10-28 | 265 | 2026-07-20 | 2026-08-20 | 23d | -18d | 0d | Dolphin Pile Driving Team & Equipment | 207h | LS | Pile caps casting |
| 267 | 1.7.1.5.5.3 | Installation of walkways |  | 4d | 2026-10-29 | 2026-11-03 | 266 | 2026-08-20 | 2026-08-26 | 4d | 2d |  | Dolphin Pile Driving Team & Equipment | 36h |  |  |
| 268 | 1.7.1.5.5.4 | Cathodic Protection and Grounding works |  | 22d | 2026-10-29 | 2026-11-29 | 266 | 2026-08-20 | 2026-09-24 | 22d | -18d | 0d | Dolphin Pile Driving Team & Equipment | 198h | unit |  |
| 269 | 1.7.1.5.6 | Beginning of the installation of the quick release hooks and integral capstans |  | 21d | 2026-12-14 | 2027-01-11 | 8FS+77d, 68, 83, 251 | 2026-10-07 | 2026-11-04 | 21d | -37d | 0d |  |  |  |  |
| 270 | 1.7.1.5.7 | Beginning of the installation of the fenders |  | 21d | 2026-12-14 | 2027-01-11 | 8FS+77d, 68 | 2026-10-07 | 2026-11-04 | 21d | -47d | 0d |  |  |  |  |
| 271 | 1.7.1.5.8 | Beginning of the installation of the bollards |  | 21d | 2026-12-14 | 2027-01-11 | 8FS+77d, 73 | 2026-10-07 | 2026-11-04 | 21d | -43d | 0d |  |  |  |  |
| 272 | 1.7.1.5.9 | Milestone 5 Completion | milestone | 0d | 2026-11-29 | 2026-11-29 | 268, 155, 267, 252 | 2026-11-05 | 2026-11-05 | 0d | -16d | 0d |  |  |  |  |
| 273 | 7 | **Milestone 6 - Completion of: Ground Improvement works, Scour Protection works, Cathodic Protection and Grounding works, Installation of all Mooring Dolphins and Jetty Accessories, Settlement monitoring stations** |  | 616d | 2024-08-20 | 2027-02-08 |  | 2026-09-24 | 2026-12-03 | 51.2d | 547d |  |  | 198h |  |  |
| 274 | 1.7.1.6.1 | **Controlled compaction from +1.0 to +2.4** |  | 143d | 2026-03-01 | 2026-10-01 |  |  |  |  | 910.44d |  |  |  |  |  |
| 275 | 1.7.1.6.1.1 | Controlled compaction from +1.0 to +2.4 from 0 to 50 m |  | 17d | 2026-03-01 | 2026-03-25 | 255 |  |  |  | 911.44d | 0d |  |  |  | Controlled compaction from +1.0 to +2.4 |
| 276 | 1.7.1.6.1.2 | Controlled compaction from +1.0 to +2.4 from 50 to 100 m |  | 17d | 2026-03-25 | 2026-04-26 | 256, 275 |  |  |  | 911.44d | 0d |  |  |  |  |
| 277 | 1.7.1.6.1.3 | Controlled compaction from +1.0 to +2.4 from 100 to 150 m |  | 16d | 2026-04-26 | 2026-05-18 | 257, 276 |  |  |  | 911.44d | 0d |  |  |  |  |
| 278 | 1.7.1.6.1.4 | Controlled compaction from +1.0 to +2.4 from 150 to 200 m |  | 16d | 2026-05-18 | 2026-06-14 | 258, 277 |  |  |  | 911.44d | 0d |  |  |  |  |
| 279 | 1.7.1.6.1.5 | Controlled compaction from +1.0 to +2.4 from 200 to 250 m |  | 16d | 2026-06-14 | 2026-07-06 | 259, 278 |  |  |  | 911.44d | 0d |  |  |  |  |
| 280 | 1.7.1.6.1.6 | Controlled compaction from +1.0 to +2.4 from 250 to 300 m |  | 16d | 2026-07-06 | 2026-07-28 | 260, 279 |  |  |  | 911.44d | 0d |  |  |  |  |
| 281 | 1.7.1.6.1.7 | Controlled compaction from +1.0 to +2.4 from 300 to 350 m |  | 16d | 2026-07-28 | 2026-08-19 | 261, 280 |  |  |  | 911.44d | 0d |  |  |  |  |
| 282 | 1.7.1.6.1.8 | Controlled compaction from +1.0 to +2.4 from 350 to 380 m |  | 10d | 2026-08-19 | 2026-09-02 | 262, 281 |  |  |  | 911.44d | 1d |  |  |  |  |
| 283 | 1.7.1.6.1.9 | Controlled compaction from +1.0 to +2.4 from 380 to 425 m |  | 18d | 2026-09-03 | 2026-10-01 | 263, 282 |  |  |  | 910.44d |  |  |  |  |  |
| 284 | 7.2 | Installation and measurements of all Settlement Monitoring stations |  | 10d | 2024-08-20 | 2024-09-02 |  | 2026-11-19 | 2026-12-03 | 10d | 559d |  |  |  |  |  |
| 285 | 7.3 | **Install Jetty and Mooring Dolphins accessories: Fenders, Bollards, Ladders, Quick Release Hooks, Capstans, Mooring Cleats, Navigation Aids,** |  | 20d | 2027-01-12 | 2027-02-08 |  | 2026-11-05 | 2026-12-02 | 20d | -47d | 0d |  |  |  |  |
| 286 | 1.7.1.6.3.1 | Ship fenders |  | 20d | 2027-01-12 | 2027-02-08 | 270 | 2026-11-05 | 2026-12-02 | 20d | -47d | 0d |  |  | unit |  |
| 287 | 1.7.1.6.3.2 | Barge fenders |  | 6d | 2027-01-12 | 2027-01-19 | 68, 270 | 2026-11-05 | 2026-11-12 | 6d | -33d | 0d |  |  | unit |  |
| 288 | 1.7.1.6.3.3 | Bollards |  | 16d | 2027-01-12 | 2027-02-02 | 271 | 2026-11-05 | 2026-11-26 | 16d | -43d | 0d |  |  | unit |  |
| 289 | 1.7.1.6.3.4 | Quick release hooks and integral capstans |  | 10d | 2027-01-12 | 2027-01-25 | 269 | 2026-11-05 | 2026-11-18 | 10d | -37d | 0d |  |  |  |  |
| 290 | 1.7.1.6.3.5 | Ladders |  | 9d | 2027-01-12 | 2027-01-24 | 78, 269 | 2026-11-05 | 2026-11-17 | 9d | -36d | 0d |  |  | unit |  |
| 291 | 7.4 | Completion of all Scour Protection works |  | 16d | 2026-04-20 | 2026-05-14 | 155 | 2026-11-05 | 2026-11-29 | 16d | 141d |  |  |  | m2 |  |
| 292 | 7.5 | Completion of Jetty and Mooring Dolphins Cathodic Protection and Grounding works |  | 22d | 2026-11-30 | 2026-12-29 | 63, 268 | 2026-09-24 | 2026-10-22 | 22d | -18d | 0d | Dolphin Pile Driving Team & Equipment | 198h | unit |  |
| 293 | 7.7 | Completion of all Settlement monitoring stations installation and measurements |  | 20d | 2025-02-27 | 2025-03-27 | 243FS+125d | 2026-11-02 | 2026-11-30 | 20d | 415d |  |  |  |  |  |
| 294 | 1.7.1.6.7 | Milestone 6 Completion | milestone | 0d | 2027-02-08 | 2027-02-08 | 284, 291, 292, 293, 286, 287, 288, 290, 289 | 2026-12-03 | 2026-12-03 | 0d | -47d | 0d |  |  |  |  |

| ID | WBS | Task | Type | Duration | Start | Finish | Predecessors | Baseline start | Baseline finish | Baseline duration | Total slack | Free slack |
| --- | --- | --- | --- | --- | --- | --- | --- | --- | --- | --- | --- | --- |
| 295 | 8 | **Milestone 7 - Final completion of all of the Works** |  | 817.44d | 2027-02-09 | 2030-06-04 |  | 2026-12-03 | 2030-03-26 | 820.78d | -47d | 0d |
| 296 | 8.9 | Final completion of all the Works in accordance with the Contract |  | 10d | 2027-02-09 | 2027-02-22 | 10 | 2026-12-03 | 2026-12-17 | 10d | -47d | 0d |
| 297 | 1.7.1.7.2 | Notification to the Engineer that Works have been completed |  | 21d | 2027-02-23 | 2027-03-28 | 296 | 2026-12-17 | 2027-01-17 | 21d | -43d | 0d |
| 298 | 8.2 | Engineer Tests on Completion |  | 10d | 2027-03-29 | 2027-04-11 | 297 | 2027-01-17 | 2027-01-31 | 10d | -43d | 0d |
| 299 | 8.8 | Demobilization of all plant, equipment, site offices, fences & gates, and evacuating from the Site and from the Staging Area including restoring the status quo ante in the Staging Area |  | 10d | 2027-04-12 | 2027-04-27 | 298 | 2027-01-31 | 2027-02-14 | 10d | -38d | 0d |
| 300 | 1.7.1.7.5 | Issue of Taking Over certificate |  | 23ed | 2027-04-15 | 2027-05-08 | 296FS-14ed, 298, 35, 36, 22, 23, 20, 24 | 2027-02-04 | 2027-02-27 | 23ed | -186.67d | 0d |
| 301 | 1.7.1.7.6 | Milestone 7 Completion | milestone | 0d | 2027-05-08 | 2027-05-08 | 299, 14 | 2027-02-27 | 2027-02-27 | 0d | -44.11d | 0d |
| 302 | 1.7.1.7.7 | Defects Notification Period/ Remedying of Defects/ Closing NCRs |  | 1095ed | 2027-05-08 | 2030-05-07 | 300 | 2027-02-27 | 2030-02-26 | 1095ed | 0d |  |
| 303 | 1.7.1.7.8 | Issue of Performance Certificate |  | 28ed | 2030-05-07 | 2030-06-04 | 302 | 2030-02-26 | 2030-03-26 | 28ed | 0d |  |

Notes:
- 298: סימוכין בחוזה: The Engineer shall conduct the Tests on Completion within sixty (60) days of the notification
- 300: סימוכין בחוזה: May request 14 days before end of works, s-clause 10.1
