| id | uniqueId | wbs | name | summary | duration | startDate | endDate | successors | predecessors |
| --- | --- | --- | --- | --- | --- | --- | --- | --- | --- |
| 1 | 76 | 1 | Hamifratz Port Oil Jetty | True | 801900 | 2024-06-02T07:00:00 | 2030-06-04T17:00:00 |  |  |
| 2 | 91 | 1.1 | Letter of Acceptance |  | 0 | 2024-06-02T07:00:00 | 2024-06-02T07:00:00 | 4FS+60 edays |  |
| 3 | 73 | 1 | Contract Milestones | True | 363480 | 2024-08-20T07:00:00 | 2027-05-08T17:00:00 |  |  |
| 4 | 74 | 1.1 | Commencement Date (C.D)/ Signature of the Contract Agreement |  | 0 | 2024-08-20T17:00:00 | 2024-08-20T17:00:00 | 31,32,21,34,28FS+49 edays,13,27,17,19,41,55,60FS+270 days,65FS+270 days,70FS+270 days,75FS+270 days,80FS+270 days,85FS+180 days,90,95,100,107,108FS+170 days,109,110,111,112,113,114,115,116,117,48FS+50 days,106,105FS+180 days,25,15FS+21 days,18 | 2FS+60 edays |
| 5 | 72 | 1.2 | Milestone 1 - Mobilization |  | 0 | 2025-02-23T15:00:00 | 2025-02-23T15:00:00 |  | 140 |
| 6 | 71 | 1.3 | Milestone 2 - Sheet Piles (South and North Main walls) - 100m , Sheet Piles of Eastern Closure wall |  | 0 | 2024-08-20T07:00:00 | 2024-08-20T07:00:00 |  |  |
| 7 | 70 | 1.4 | Milestone 3 - Completion of all Steel Sheet Pile works in accordance with the Design |  | 0 | 2024-08-20T07:00:00 | 2024-08-20T07:00:00 |  |  |
| 8 | 69 | 1.5 | Milestone 4 - Completion of Vibroflotation W/Stone Columns and Final Tensioning of Tie Rods |  | 0 | 2026-08-25T14:00:00 | 2026-08-25T14:00:00 | 271FS+77 days,270FS+77 days,269FS+77 days,265 | 244 |
| 9 | 68 | 1.6 | Milestone 5 - Completion of Mooring Dolphins Concrete Pile Caps, Inclinometers and Test stations works and Completion of Fascia Beam and Capping Beam concrete works |  | 0 | 2026-11-29T17:00:00 | 2026-11-29T17:00:00 |  | 272,105 |
| 10 | 67 | 1.7 | Milestone 6 - Completion of: Ground Improvement works, Scour Protection works, Cathodic Protection and Grounding works, Installation of all Mooring Dolphins and Jetty Accessories, Settlement monitoring stations |  | 0 | 2027-02-08T17:00:00 | 2027-02-08T17:00:00 | 296 | 294 |
| 11 | 66 | 1.8 | Milestone 7 - Final completion of all of the Works |  | 0 | 2027-05-08T17:00:00 | 2027-05-08T17:00:00 |  | 301 |
| 12 | 82 | 1.3 | Contractual documents to submit | True | 362940 | 2024-08-20T17:00:00 | 2027-05-08T17:00:00 |  |  |
| 13 | 83 | 1.3.1 | Performance Security (10% of the Accepted Contract Amount) |  | 0 | 2024-08-20T17:00:00 | 2024-08-20T17:00:00 | 121,124,126,127,122 | 4,27 |
| 14 | 84 | 1.3.2 | Defects Liability Security |  | 0 | 2027-05-08T17:00:00 | 2027-05-08T17:00:00 | 301 | 300 |
| 15 | 649 | 1.3.3 | Marine works insurance |  | 0 | 2025-02-02T07:00:00 | 2025-02-02T07:00:00 | 142 | 4FS+21 days |
