| id | uniqueId | wbs | name | summary | startDate | endDate |
| --- | --- | --- | --- | --- | --- | --- |
| 1 | 76 | 1 | Hamifratz Port Oil Jetty | True | 2024-06-02T07:00:00 | 2030-06-04T17:00:00 |
| 2 | 91 | 1.1 | Letter of Acceptance |  | 2024-06-02T07:00:00 | 2024-06-02T07:00:00 |
| 3 | 73 | 1 | Contract Milestones | True | 2024-08-20T07:00:00 | 2027-05-08T17:00:00 |
| 4 | 74 | 1.1 | Commencement Date (C.D)/ Signature of the Contract Agreement |  | 2024-08-20T17:00:00 | 2024-08-20T17:00:00 |
| 5 | 72 | 1.2 | Milestone 1 - Mobilization |  | 2025-02-23T15:00:00 | 2025-02-23T15:00:00 |
| 6 | 71 | 1.3 | Milestone 2 - Sheet Piles (South and North Main walls) - 100m , Sheet Piles of Eastern Closure wall |  | 2024-08-20T07:00:00 | 2024-08-20T07:00:00 |
| 7 | 70 | 1.4 | Milestone 3 - Completion of all Steel Sheet Pile works in accordance with the Design |  | 2024-08-20T07:00:00 | 2024-08-20T07:00:00 |
| 8 | 69 | 1.5 | Milestone 4 - Completion of Vibroflotation W/Stone Columns and Final Tensioning of Tie Rods |  | 2026-08-25T14:00:00 | 2026-08-25T14:00:00 |
| 9 | 68 | 1.6 | Milestone 5 - Completion of Mooring Dolphins Concrete Pile Caps, Inclinometers and Test stations works and Completion of Fascia Beam and Capping Beam concrete works |  | 2026-11-29T17:00:00 | 2026-11-29T17:00:00 |
| 10 | 67 | 1.7 | Milestone 6 - Completion of: Ground Improvement works, Scour Protection works, Cathodic Protection and Grounding works, Installation of all Mooring Dolphins and Jetty Accessories, Settlement monitoring stations |  | 2027-02-08T17:00:00 | 2027-02-08T17:00:00 |
| 11 | 66 | 1.8 | Milestone 7 - Final completion of all of the Works |  | 2027-05-08T17:00:00 | 2027-05-08T17:00:00 |
| 12 | 82 | 1.3 | Contractual documents to submit | True | 2024-08-20T17:00:00 | 2027-05-08T17:00:00 |
| 13 | 83 | 1.3.1 | Performance Security (10% of the Accepted Contract Amount) |  | 2024-08-20T17:00:00 | 2024-08-20T17:00:00 |
| 14 | 84 | 1.3.2 | Defects Liability Security |  | 2027-05-08T17:00:00 | 2027-05-08T17:00:00 |
| 15 | 649 | 1.3.3 | Marine works insurance |  | 2025-02-02T07:00:00 | 2025-02-02T07:00:00 |

Links (predecessorId, successorId, type, lag, lagFormat):
- 2 4 FS +60 edays
- 140 5
- 244 8
- 272 9
- 105 9
- 294 10
- 301 11
- 4 13
- 27 13
- 300 14
- 4 15 FS +21 days
- 4 17
- 4 18
- 4 19
- 296 20
